# elaboration_project_plan

Schedule from MS Project, 2007-03-01 to 2007-10-01.
Duke University

## Calendars

- Standard: Mon-Fri 08:00-12:00, 13:00-17:00; Sat-Sun off.

## Resources

| Resource |
| --- |
| Patrick |
| Ram |
| Elaborators |
| PriyatamElaborators |
| Development team |
| Pri |
| Priyatam |
| Ramakrishna |
| Kruttik |
| Manav |
| Developers |
| Development teatm |
| BAH |
| Adopters |
| Pryatam |

## Schedule

| ID | WBS | Task | Type | Duration | Start | Finish | Predecessors | Total slack | Free slack | Constraint | Resources | Work |
| --- | --- | --- | --- | --- | --- | --- | --- | --- | --- | --- | --- | --- |
| 1 | 1 | **Iteration 1 (eligibility, study personnel, multi-site study)** |  | 31d | 2007-03-01 | 2007-04-12 |  | 121d |  |  |  | 17256h |
| 2 | 1.1 | Iteration start | milestone | 0d | 2007-03-01 | 2007-03-01 |  | 121d | 0d | start no earlier than 2007-03-01 |  |  |
| 3 | 1.2 | **Project Management** |  | 30d | 2007-03-01 | 2007-04-11 | 2 | 122d |  |  | Patrick; Adopters; BAH | 2640h |
| 4 | 1.2.1 | **Draft project plan (task 1.1)** |  | 30d | 2007-03-01 | 2007-04-11 |  | 122d |  |  | Patrick; Adopters; BAH | 960h |
| 5 | 1.2.1.1 | Developer draft |  | 5d | 2007-03-01 | 2007-03-07 |  | 150d | 0d |  | Patrick | 40h |
| 6 | 1.2.1.2 | BAH review |  | 5d | 2007-03-08 | 2007-03-14 | 5 | 150d | 0d |  | BAH | 40h |
| 7 | 1.2.1.3 | Developer update |  | 5d | 2007-03-15 | 2007-03-21 | 6 | 150d | 0d |  | Patrick | 40h |
| 8 | 1.2.1.4 | Adopter review |  | 3d | 2007-03-22 | 2007-03-26 | 7 | 150d | 0d |  | Adopters | 24h |
| 9 | 1.2.1.5 | Developer update |  | 2d | 2007-03-27 | 2007-03-28 | 8 | 150d | 0d |  | Patrick | 16h |
| 10 | 1.2.1.6 | Deliver project plan to BAH (task 1.1) | milestone | 0d | 2007-03-28 | 2007-03-28 | 9 | 150d | 0d |  | Patrick |  |
| 11 | 1.2.1.7 | BAH review project plan (task 1.1) |  | 10d | 2007-03-29 | 2007-04-11 | 10 | 150d |  |  | BAH | 80h |
| 12 | 1.2.2 | **Update risk matrix (task 1.3.1)** |  | 20d | 2007-03-01 | 2007-03-28 |  | 122d |  |  | Patrick; BAH | 480h |
| 13 | 1.2.2.1 | Update risk matrix for week 1 |  | 5d | 2007-03-01 | 2007-03-07 |  | 150d | 0d |  | Patrick | 40h |
| 14 | 1.2.2.2 | Update risk matrix for week 2 |  | 5d | 2007-03-08 | 2007-03-14 | 13 | 150d | 0d |  | Patrick | 40h |
| 15 | 1.2.2.3 | Deliver risk matrix to BAH (task 1.3.1) | milestone | 0d | 2007-03-14 | 2007-03-14 | 14 | 150d | 0d |  | Patrick |  |
| 16 | 1.2.2.4 | BAH review risk matrix (task 1.3.1) |  | 10d | 2007-03-15 | 2007-03-28 | 15 | 160d |  |  | BAH | 80h |
| 17 | 1.2.3 | **Monthly report (task 1.3.1)** |  | 20d | 2007-03-15 | 2007-04-11 | 15 | 122d |  |  | Patrick; BAH | 480h |
| 18 | 1.2.3.1 | Update risk matrix for week 3 |  | 5d | 2007-03-15 | 2007-03-21 |  | 150d | 0d |  | Patrick | 40h |
| 19 | 1.2.3.2 | Update risk matrix for week 4 |  | 5d | 2007-03-22 | 2007-03-28 | 18 | 150d | 0d |  | Patrick | 40h |
| 20 | 1.2.3.3 | Deliver monthly report and risk matrix to BAH (task 1.3.1) | milestone | 0d | 2007-03-28 | 2007-03-28 | 19 | 150d | 0d |  | Patrick |  |
| 21 | 1.2.3.4 | BAH review monthly report and risk matrix (task 1.3.1) |  | 10d | 2007-03-29 | 2007-04-11 | 20 | 150d |  |  | BAH | 80h |
| 22 | 1.3 | **Requirements and use cases** |  | 30d | 2007-03-01 | 2007-04-11 | 2 | 121d |  |  | Developers; Adopters; BAH | 2688h |
| 23 | 1.3.1 | **Create level 1 use cases and requirements** |  | 2d | 2007-03-01 | 2007-03-02 |  | 121d | 0d |  | Developers | 32h |
| 24 | 1.3.1.1 | Use case document (task 3.1.1) |  | 1d | 2007-03-01 | 2007-03-01 |  | 149d | 0d |  | Developers | 8h |
| 25 | 1.3.1.2 | Requirements document (3.2.1) |  | 1d | 2007-03-02 | 2007-03-02 | 24 | 149d |  |  | Developers | 8h |

| ID | WBS | Task | Duration | Start | Finish | Predecessors | Total slack | Free slack | Resources | Work |
| --- | --- | --- | --- | --- | --- | --- | --- | --- | --- | --- |
| 26 | 1.3.2 | **Update use case document (task 3.1.1, task 5.2.1)** | 9d | 2007-03-05 | 2007-03-15 | 23 | 122d | 0d | Developers; Adopters | 888h |
| 27 | 1.3.2.1 | **Update eligibility use cases** | 9d | 2007-03-05 | 2007-03-15 |  | 122d |  | Kruttik; Priyatam; Adopters | 312h |
| 28 | 1.3.2.1.1 | Developer update | 2d | 2007-03-05 | 2007-03-06 |  | 150d | 0d | Kruttik; Priyatam | 32h |
| 29 | 1.3.2.1.2 | Adopter review | 5d | 2007-03-07 | 2007-03-13 | 28 | 150d | 0d | Adopters | 40h |
| 30 | 1.3.2.1.3 | Developer update | 1d | 2007-03-14 | 2007-03-14 | 29 | 150d | 0d | Kruttik; Priyatam | 16h |
| 31 | 1.3.2.1.4 | Adopter sign-off | 1d | 2007-03-15 | 2007-03-15 | 30 | 150d |  | Adopters | 8h |
| 32 | 1.3.2.2 | **Update study personel use cases** | 9d | 2007-03-05 | 2007-03-15 |  | 122d |  | Ramakrishna; Adopters | 216h |
| 33 | 1.3.2.2.1 | Developer update | 2d | 2007-03-05 | 2007-03-06 |  | 150d | 0d | Ramakrishna | 16h |
| 34 | 1.3.2.2.2 | Adopter review | 5d | 2007-03-07 | 2007-03-13 | 33 | 150d | 0d | Adopters | 40h |
| 35 | 1.3.2.2.3 | Developer update | 1d | 2007-03-14 | 2007-03-14 | 34 | 150d | 0d | Ramakrishna | 8h |
| 36 | 1.3.2.2.4 | Adopter sign-off | 1d | 2007-03-15 | 2007-03-15 | 35 | 150d |  | Adopters | 8h |
| 37 | 1.3.2.3 | **Update multi-site trial use cases** | 9d | 2007-03-05 | 2007-03-15 |  | 122d |  | Manav; Adopters | 216h |
| 38 | 1.3.2.3.1 | Developer update | 2d | 2007-03-05 | 2007-03-06 |  | 150d | 0d | Manav | 16h |
| 39 | 1.3.2.3.2 | Adopter review | 5d | 2007-03-07 | 2007-03-13 | 38 | 150d | 0d | Adopters | 40h |
| 40 | 1.3.2.3.3 | Developer update | 1d | 2007-03-14 | 2007-03-14 | 39 | 150d | 0d | Manav | 8h |
| 41 | 1.3.2.3.4 | Adopter sign-off | 1d | 2007-03-15 | 2007-03-15 | 40 | 150d |  | Adopters | 8h |
| 42 | 1.3.3 | **Update requirements document (task 3.2.1, task 5.3.1)** | 9d | 2007-03-16 | 2007-03-28 | 26 | 122d | 0d | Developers; Adopters | 888h |
| 43 | 1.3.3.1 | **Update eligibility requirements** | 9d | 2007-03-16 | 2007-03-28 |  | 122d |  | Kruttik; Priyatam; Adopters | 312h |
| 44 | 1.3.3.1.1 | Developer update | 2d | 2007-03-16 | 2007-03-19 |  | 122d | 0d | Kruttik; Priyatam | 32h |
| 45 | 1.3.3.1.2 | Adopter review | 5d | 2007-03-20 | 2007-03-26 | 44 | 122d | 0d | Adopters | 40h |
| 46 | 1.3.3.1.3 | Developer update | 1d | 2007-03-27 | 2007-03-27 | 45 | 122d | 0d | Kruttik; Priyatam | 16h |
| 47 | 1.3.3.1.4 | Adopter sign-off | 1d | 2007-03-28 | 2007-03-28 | 46 | 122d |  | Adopters | 8h |
| 48 | 1.3.3.2 | **Update study personel requirements** | 9d | 2007-03-16 | 2007-03-28 |  | 122d |  | Ramakrishna; Adopters | 216h |
| 49 | 1.3.3.2.1 | Developer update | 2d | 2007-03-16 | 2007-03-19 |  | 122d | 0d | Ramakrishna | 16h |
| 50 | 1.3.3.2.2 | Adopter review | 5d | 2007-03-20 | 2007-03-26 | 49 | 122d | 0d | Adopters | 40h |
| 51 | 1.3.3.2.3 | Developer update | 1d | 2007-03-27 | 2007-03-27 | 50 | 122d | 0d | Ramakrishna | 8h |
| 52 | 1.3.3.2.4 | Adopter sign-off | 1d | 2007-03-28 | 2007-03-28 | 51 | 122d |  | Adopters | 8h |

| ID | WBS | Task | Type | Duration | Start | Finish | Predecessors | Total slack | Free slack | Resources | Work |
| --- | --- | --- | --- | --- | --- | --- | --- | --- | --- | --- | --- |
| 53 | 1.3.3.3 | **Update multi-site trial requirements** |  | 9d | 2007-03-16 | 2007-03-28 |  | 122d |  | Manav; Adopters | 216h |
| 54 | 1.3.3.3.1 | Developer update |  | 2d | 2007-03-16 | 2007-03-19 |  | 122d | 0d | Manav | 16h |
| 55 | 1.3.3.3.2 | Adopter review |  | 5d | 2007-03-20 | 2007-03-26 | 54 | 122d | 0d | Adopters | 40h |
| 56 | 1.3.3.3.3 | Developer update |  | 1d | 2007-03-27 | 2007-03-27 | 55 | 122d | 0d | Manav | 8h |
| 57 | 1.3.3.3.4 | Adopter sign-off |  | 1d | 2007-03-28 | 2007-03-28 | 56 | 122d |  | Adopters | 8h |
| 58 | 1.3.4 | Developer deliver use case document to BAH (task 3.1.1, task 5.2.1) | milestone | 0d | 2007-03-28 | 2007-03-28 | 42 | 122d | 0d | Patrick |  |
| 59 | 1.3.5 | BAH review use case document (task 3.1.1, task 5.2.1) |  | 10d | 2007-03-29 | 2007-04-11 | 58 | 122d |  | BAH | 80h |
| 60 | 1.3.6 | Developer deliver requirements document to BAH (task 3.2.1, task 5.3.1) | milestone | 0d | 2007-03-28 | 2007-03-28 | 42 | 122d | 0d | Patrick |  |
| 61 | 1.3.7 | BAH review requirements document (task 3.2.1, task 5.3.1) |  | 10d | 2007-03-29 | 2007-04-11 | 60 | 122d |  | BAH | 80h |
| 62 | 1.4 | **Analysis and Design** |  | 29d | 2007-03-05 | 2007-04-12 | 23, 2 | 121d |  | Developers; Adopters; BAH | 3288h |
| 63 | 1.4.1 | **Perform level 1 design** |  | 2d | 2007-03-05 | 2007-03-06 |  | 121d | 0d | Developers | 48h |
| 64 | 1.4.1.1 | Cursory BRIDG harmonization |  | 1d | 2007-03-05 | 2007-03-05 |  | 149d | 0d | Developers | 8h |
| 65 | 1.4.1.2 | Update implementation model |  | 1d | 2007-03-06 | 2007-03-06 | 64 | 149d |  | Developers | 8h |
| 66 | 1.4.1.3 | Cursory system design |  | 2d | 2007-03-05 | 2007-03-06 |  | 149d |  | Developers | 16h |
| 67 | 1.4.2 | **Modeling (task 3.3.1)** |  | 27d | 2007-03-07 | 2007-04-12 | 63 | 121d |  | Developers; Adopters | 1104h |
| 68 | 1.4.2.1 | **Update model** |  | 6d | 2007-03-07 | 2007-03-14 |  | 121d | 0d | Developers | 264h |
| 69 | 1.4.2.1.1 | **BRIDG harmonization** |  | 3d | 2007-03-07 | 2007-03-09 | 63 | 121d | 0d |  | 96h |
| 70 | 1.4.2.1.1.1 | Harmonize Study model |  | 2d | 2007-03-07 | 2007-03-08 |  | 122d |  | Kruttik; Priyatam; Manav | 48h |
| 71 | 1.4.2.1.1.2 | Harmonize Personnel model |  | 3d | 2007-03-07 | 2007-03-09 |  | 121d |  | Ramakrishna | 24h |
| 72 | 1.4.2.1.1.3 | Harmonize Multi-site Study model |  | 3d | 2007-03-07 | 2007-03-09 |  | 121d |  | Manav | 24h |
| 73 | 1.4.2.1.2 | **Model implementation** |  | 3d | 2007-03-12 | 2007-03-14 | 69 | 121d |  |  | 120h |
| 74 | 1.4.2.1.2.1 | Implement Study model |  | 3d | 2007-03-12 | 2007-03-14 |  | 121d |  | Kruttik; Priyatam; Manav | 72h |
| 75 | 1.4.2.1.2.2 | Implement Personnel model |  | 3d | 2007-03-12 | 2007-03-14 |  | 121d |  | Ramakrishna | 24h |
| 76 | 1.4.2.1.2.3 | Implement Multi-site Study model |  | 3d | 2007-03-12 | 2007-03-14 |  | 121d |  | Manav | 24h |
| 77 | 1.4.2.2 | Adopter review |  | 5d | 2007-03-15 | 2007-03-21 | 68 | 121d | 0d | Adopters | 40h |

| ID | WBS | Task | Type | Duration | Start | Finish | Predecessors | Total slack | Free slack | Resources | Work |
| --- | --- | --- | --- | --- | --- | --- | --- | --- | --- | --- | --- |
| 78 | 1.4.2.3 | **Update model** |  | 6d | 2007-03-22 | 2007-03-29 | 77 | 121d | 0d | Developers | 288h |
| 79 | 1.4.2.3.1 | **BRIDG harmonization** |  | 3d | 2007-03-22 | 2007-03-26 | 77 | 121d | 0d |  | 120h |
| 80 | 1.4.2.3.1.1 | Harmonize Study model |  | 3d | 2007-03-22 | 2007-03-26 |  | 149d |  | Kruttik; Priyatam; Manav | 72h |
| 81 | 1.4.2.3.1.2 | Harmonize Personnel model |  | 3d | 2007-03-22 | 2007-03-26 |  | 149d |  | Ramakrishna | 24h |
| 82 | 1.4.2.3.1.3 | Harmonize Multi-site Study model |  | 3d | 2007-03-22 | 2007-03-26 |  | 149d |  | Manav | 24h |
| 83 | 1.4.2.3.2 | **Model implementation** |  | 3d | 2007-03-27 | 2007-03-29 | 79 | 121d |  |  | 120h |
| 84 | 1.4.2.3.2.1 | Implement Study model |  | 3d | 2007-03-27 | 2007-03-29 |  | 149d |  | Kruttik; Priyatam; Manav | 72h |
| 85 | 1.4.2.3.2.2 | Implement Personnel model |  | 3d | 2007-03-27 | 2007-03-29 |  | 149d |  | Ramakrishna | 24h |
| 86 | 1.4.2.3.2.3 | Implement Multi-site Study model |  | 3d | 2007-03-27 | 2007-03-29 |  | 149d |  | Manav | 24h |
| 87 | 1.4.2.4 | Developer deliver UML to BAH (task 3.3.1) | milestone | 0d | 2007-03-29 | 2007-03-29 | 78 | 121d | 0d | Patrick |  |
| 88 | 1.4.2.5 | BAH review of UML (task 3.3.1) |  | 10d | 2007-03-30 | 2007-04-12 | 87 | 121d |  | BAH | 80h |
| 89 | 1.4.3 | **System design (task 3.4.1)** |  | 25d | 2007-03-07 | 2007-04-10 | 63 | 123d |  | Developers; BAH | 1440h |
| 90 | 1.4.3.1 | **Design eligibility** |  | 15d | 2007-03-07 | 2007-03-27 |  | 123d | 0d | Kruttik; Priyatam | 480h |
| 91 | 1.4.3.1.1 | Draft UML |  | 5d | 2007-03-07 | 2007-03-13 |  | 123d | 0d | Kruttik; Priyatam | 80h |
| 92 | 1.4.3.1.2 | Team review |  | 5d | 2007-03-14 | 2007-03-20 | 91 | 123d | 0d | Kruttik; Priyatam | 80h |
| 93 | 1.4.3.1.3 | Update design document |  | 5d | 2007-03-21 | 2007-03-27 | 92 | 123d |  | Kruttik; Priyatam | 80h |
| 94 | 1.4.3.2 | **Design personnel** |  | 15d | 2007-03-07 | 2007-03-27 |  | 123d | 0d | Ramakrishna | 240h |
| 95 | 1.4.3.2.1 | Draft UML |  | 5d | 2007-03-07 | 2007-03-13 |  | 123d | 0d | Ramakrishna | 40h |
| 96 | 1.4.3.2.2 | Team review |  | 5d | 2007-03-14 | 2007-03-20 | 95 | 123d | 0d | Ramakrishna | 40h |
| 97 | 1.4.3.2.3 | Update design document |  | 5d | 2007-03-21 | 2007-03-27 | 96 | 123d |  | Ramakrishna | 40h |
| 98 | 1.4.3.3 | **Design multi-site study** |  | 15d | 2007-03-07 | 2007-03-27 |  | 123d | 0d | Manav | 240h |
| 99 | 1.4.3.3.1 | Draft UML |  | 5d | 2007-03-07 | 2007-03-13 |  | 123d | 0d | Manav | 40h |
| 100 | 1.4.3.3.2 | Team review |  | 5d | 2007-03-14 | 2007-03-20 | 99 | 123d | 0d | Manav | 40h |
| 101 | 1.4.3.3.3 | Update design document |  | 5d | 2007-03-21 | 2007-03-27 | 100 | 123d |  | Manav | 40h |
| 102 | 1.4.3.4 | Deliver design doc to BAH (task 3.4.1) | milestone | 0d | 2007-03-27 | 2007-03-27 | 90, 94, 98 | 123d | 0d | Patrick |  |
| 103 | 1.4.3.5 | BAH review design doc (task 3.4.1) |  | 10d | 2007-03-28 | 2007-04-10 | 102 | 123d |  | BAH | 80h |

| ID | WBS | Task | Duration | Start | Finish | Predecessors | Total slack | Free slack | Resources | Work |
| --- | --- | --- | --- | --- | --- | --- | --- | --- | --- | --- |
| 104 | 1.5 | **Implementation (task 3.5.1)** | 26d | 2007-03-07 | 2007-04-11 | 63, 2 | 122d |  | Developers; BAH | 2032h |
| 105 | 1.5.1 | **Database** | 5d | 2007-03-07 | 2007-03-13 |  | 122d | 11d | Developers | 264h |
| 106 | 1.5.1.1 | **Eligibility model** | 3d | 2007-03-07 | 2007-03-09 |  | 123d | 0d | Kruttik; Priyatam | 96h |
| 107 | 1.5.1.1.1 | Create DDLs | 1d | 2007-03-07 | 2007-03-07 |  | 151d | 0d | Kruttik; Priyatam | 16h |
| 108 | 1.5.1.1.2 | Apply to database | 1d | 2007-03-08 | 2007-03-08 | 107 | 151d | 0d | Kruttik; Priyatam | 16h |
| 109 | 1.5.1.1.3 | Create test data | 1d | 2007-03-09 | 2007-03-09 | 108 | 151d |  | Kruttik; Priyatam | 16h |
| 110 | 1.5.1.2 | **Study personnel** | 5d | 2007-03-07 | 2007-03-13 |  | 122d | 0d | Ramakrishna | 80h |
| 111 | 1.5.1.2.1 | Investigate how to implement Person with Role | 2d | 2007-03-07 | 2007-03-08 |  | 150d | 0d | Ramakrishna | 16h |
| 112 | 1.5.1.2.2 | Create DDLs | 1d | 2007-03-09 | 2007-03-09 | 111 | 150d | 0d | Ramakrishna | 8h |
| 113 | 1.5.1.2.3 | Apply to database | 1d | 2007-03-12 | 2007-03-12 | 112 | 150d | 0d | Ramakrishna | 8h |
| 114 | 1.5.1.2.4 | Create test data | 1d | 2007-03-13 | 2007-03-13 | 113 | 150d |  | Ramakrishna | 8h |
| 115 | 1.5.1.3 | **Multi-site** | 3d | 2007-03-07 | 2007-03-09 |  | 124d | 0d | Manav | 48h |
| 116 | 1.5.1.3.1 | Create DDLs | 1d | 2007-03-07 | 2007-03-07 |  | 152d | 0d | Manav | 8h |
| 117 | 1.5.1.3.2 | Apply to database | 1d | 2007-03-08 | 2007-03-08 | 116 | 152d | 0d | Manav | 8h |
| 118 | 1.5.1.3.3 | Create test data | 1d | 2007-03-09 | 2007-03-09 | 117 | 152d |  | Manav | 8h |
| 119 | 1.5.2 | **Deployment** | 2d | 2007-03-12 | 2007-03-13 |  | 133d | 11d | Manav | 32h |
| 120 | 1.5.2.1 | Deploy a second C3PR for multi-site testing | 2d | 2007-03-12 | 2007-03-13 | 115 | 161d |  | Manav | 16h |
| 121 | 1.5.3 | **Business layer** | 8d | 2007-03-12 | 2007-03-21 |  | 122d |  | Developers | 480h |
| 122 | 1.5.3.1 | **Implement eligibility APIs** | 7d | 2007-03-12 | 2007-03-20 | 106 | 123d | 0d | Kruttik; Priyatam | 224h |
| 123 | 1.5.3.1.1 | Design APIs | 2d | 2007-03-12 | 2007-03-13 |  | 151d | 0d | Kruttik; Priyatam | 32h |
| 124 | 1.5.3.1.2 | Implement APIs | 3d | 2007-03-14 | 2007-03-16 | 123 | 151d | 0d | Kruttik; Priyatam | 48h |
| 125 | 1.5.3.1.3 | Deploy APIs | 2d | 2007-03-19 | 2007-03-20 | 124 | 151d |  | Kruttik; Priyatam | 32h |
| 126 | 1.5.3.2 | **Implement study personnel APIs** | 6d | 2007-03-14 | 2007-03-21 | 110 | 122d | 0d | Ramakrishna | 96h |
| 127 | 1.5.3.2.1 | Design APIs | 2d | 2007-03-14 | 2007-03-15 |  | 150d | 0d | Ramakrishna | 16h |
| 128 | 1.5.3.2.2 | Implement APIs | 3d | 2007-03-16 | 2007-03-20 | 127 | 150d | 0d | Ramakrishna | 24h |
| 129 | 1.5.3.2.3 | Deploy APIs | 1d | 2007-03-21 | 2007-03-21 | 128 | 150d |  | Ramakrishna | 8h |

| ID | WBS | Task | Type | Duration | Start | Finish | Predecessors | Total slack | Free slack | Resources | Work |
| --- | --- | --- | --- | --- | --- | --- | --- | --- | --- | --- | --- |
| 130 | 1.5.3.3 | **Implement C3PR registration APIs** |  | 6d | 2007-03-12 | 2007-03-19 | 115 | 124d | 0d | Manav | 96h |
| 131 | 1.5.3.3.1 | Design APIs |  | 2d | 2007-03-12 | 2007-03-13 |  | 152d | 0d | Manav | 16h |
| 132 | 1.5.3.3.2 | Implement APIs |  | 3d | 2007-03-14 | 2007-03-16 | 131 | 152d | 0d | Manav | 24h |
| 133 | 1.5.3.3.3 | Deploy APIs |  | 1d | 2007-03-19 | 2007-03-19 | 132 | 152d |  | Manav | 8h |
| 134 | 1.5.4 | **ESB** |  | 5d | 2007-03-20 | 2007-03-26 |  | 124d | 2d | Manav | 80h |
| 135 | 1.5.4.1 | Implement inbound-binding component for C3PR registration |  | 5d | 2007-03-20 | 2007-03-26 | 130 | 152d |  | Manav | 40h |
| 136 | 1.5.5 | **Web interface** |  | 7d | 2007-03-20 | 2007-03-28 |  | 122d | 0d | Developers | 680h |
| 137 | 1.5.5.1 | **Modify study management interface** |  | 6d | 2007-03-20 | 2007-03-27 |  | 123d |  | Kruttik; Priyatam; Manav | 384h |
| 138 | 1.5.5.1.1 | Manage eligibility criteria |  | 5d | 2007-03-21 | 2007-03-27 | 122 | 151d |  | Kruttik; Priyatam; Manav | 120h |
| 139 | 1.5.5.1.2 | Manage multi-site study |  | 5d | 2007-03-20 | 2007-03-26 | 130 | 152d |  | Kruttik; Priyatam; Manav | 120h |
| 140 | 1.5.5.2 | **Modify study personnel management interface** |  | 5d | 2007-03-22 | 2007-03-28 |  | 122d |  | Ramakrishna | 80h |
| 141 | 1.5.5.2.1 | Manage study personnel |  | 5d | 2007-03-22 | 2007-03-28 | 126 | 150d |  | Ramakrishna | 40h |
| 142 | 1.5.5.3 | **Modify registration interface** |  | 5d | 2007-03-21 | 2007-03-27 |  | 123d |  | Kruttik; Priyatam | 160h |
| 143 | 1.5.5.3.1 | Check eligibility |  | 5d | 2007-03-21 | 2007-03-27 | 122 | 151d |  | Kruttik; Priyatam | 80h |
| 144 | 1.5.6 | Deliver codebase to BAH (task 3.5.1) | milestone | 0d | 2007-03-28 | 2007-03-28 | 105, 134, 136, 119 | 150d | 0d | Patrick |  |
| 145 | 1.5.7 | BAH review codebase (task 3.5.1) |  | 10d | 2007-03-29 | 2007-04-11 | 144 | 150d |  | BAH | 80h |
| 146 | 1.6 | **Testing** |  | 30d | 2007-03-01 | 2007-04-11 | 2 | 122d |  | Developers; Adopters; BAH | 4952h |
| 147 | 1.6.1 | **Developer testing** |  | 30d | 2007-03-01 | 2007-04-11 |  | 122d |  | BAH; Adopters; Developers | 1968h |
| 148 | 1.6.1.1 | **Update developer test plan (task 3.6.1, task 5.4.1)** |  | 30d | 2007-03-01 | 2007-04-11 |  | 122d |  | Developers; Adopters; BAH | 960h |
| 149 | 1.6.1.1.1 | Developer draft |  | 5d | 2007-03-01 | 2007-03-07 |  | 150d | 0d | Developers | 40h |
| 150 | 1.6.1.1.2 | Adopter review |  | 5d | 2007-03-08 | 2007-03-14 | 149 | 150d | 0d | Adopters | 40h |
| 151 | 1.6.1.1.3 | Developer update |  | 5d | 2007-03-15 | 2007-03-21 | 150 | 150d | 0d | Developers | 40h |
| 152 | 1.6.1.1.4 | Adopter review and sign |  | 5d | 2007-03-22 | 2007-03-28 | 151 | 150d | 0d | Adopters | 40h |
| 153 | 1.6.1.1.5 | Deliver signed test plan to BAH (task 3.6.1, task 5.4.1) | milestone | 0d | 2007-03-28 | 2007-03-28 | 152 | 150d | 0d | Patrick |  |
| 154 | 1.6.1.1.6 | BAH review signed test plan (task 3.6.1, task 5.4.1) |  | 10d | 2007-03-29 | 2007-04-11 | 153 | 150d |  | BAH | 80h |

| ID | WBS | Task | Type | Duration | Start | Finish | Predecessors | Total slack | Free slack | Resources | Work |
| --- | --- | --- | --- | --- | --- | --- | --- | --- | --- | --- | --- |
| 155 | 1.6.1.2 | **Integration and system testing (task 3.8.1)** |  | 10d | 2007-03-22 | 2007-04-04 | 149, 144FS-5d | 127d |  | Developers; BAH | 288h |
| 156 | 1.6.1.2.1 | Generate test data |  | 1d | 2007-03-22 | 2007-03-22 |  | 164d |  | Developers | 8h |
| 157 | 1.6.1.2.2 | Write tests |  | 3d | 2007-03-22 | 2007-03-26 |  | 160d | 0d | Developers | 24h |
| 158 | 1.6.1.2.3 | Validate tests |  | 1d | 2007-03-27 | 2007-03-27 | 157 | 160d | 0d | Developers | 8h |
| 159 | 1.6.1.2.4 | Generate test report |  | 1d | 2007-03-28 | 2007-03-28 | 158 | 160d |  | Developers | 8h |
| 160 | 1.6.1.2.5 | Deliver test report to BAH (task 3.8.1) | milestone | 0d | 2007-03-22 | 2007-03-22 |  | 165d |  | Patrick |  |
| 161 | 1.6.1.2.6 | BAH review test report (task 3.8.1) |  | 10d | 2007-03-22 | 2007-04-04 |  | 155d |  | BAH | 80h |
| 162 | 1.6.2 | **Adopter testing** |  | 30d | 2007-03-01 | 2007-04-11 |  | 122d |  | Adopters; Developers; BAH | 2264h |
| 163 | 1.6.2.1 | **Update adopter test plan (task 5.5.1)** |  | 30d | 2007-03-01 | 2007-04-11 |  | 122d |  | Adopters; Developers; BAH | 1000h |
| 164 | 1.6.2.1.1 | Adopter update test script |  | 5d | 2007-03-01 | 2007-03-07 |  | 150d | 0d | Adopters | 40h |
| 165 | 1.6.2.1.2 | Adopter update test approach |  | 5d | 2007-03-08 | 2007-03-14 | 164 | 150d | 0d | Adopters | 40h |
| 166 | 1.6.2.1.3 | Developer review |  | 5d | 2007-03-15 | 2007-03-21 | 165 | 150d | 0d | Patrick; Ram | 80h |
| 167 | 1.6.2.1.4 | Adopter update |  | 5d | 2007-03-22 | 2007-03-28 | 166 | 150d | 0d | Adopters | 40h |
| 168 | 1.6.2.1.5 | Developer deliver adopter test plan to BAH (task 5.5.1) | milestone | 0d | 2007-03-28 | 2007-03-28 | 167 | 150d | 0d | Patrick |  |
| 169 | 1.6.2.1.6 | BAH review adopter test plan (task 5.5.1) |  | 10d | 2007-03-29 | 2007-04-11 | 168 | 150d |  | BAH | 80h |
| 170 | 1.6.2.2 | **QA testing (task 5.6.1)** |  | 22d | 2007-03-08 | 2007-04-06 | 164 | 125d |  | Adopters; BAH | 544h |
| 171 | 1.6.2.2.1 | Adopter create test data |  | 5d | 2007-03-08 | 2007-03-14 |  | 153d | 0d | Adopters | 40h |
| 172 | 1.6.2.2.2 | Adopter perform test script |  | 5d | 2007-03-15 | 2007-03-21 | 171 | 153d | 0d | Adopters | 40h |
| 173 | 1.6.2.2.3 | Adopter document results |  | 2d | 2007-03-22 | 2007-03-23 | 172 | 153d | 0d | Adopters | 16h |
| 174 | 1.6.2.2.4 | Adopter log bugs |  | 2d | 2007-03-26 | 2007-03-27 | 173 | 161d |  | Adopters | 16h |
| 175 | 1.6.2.2.5 | Developer deliver adopter test report to BAH (task 5.6.1) | milestone | 0d | 2007-03-23 | 2007-03-23 | 173 | 153d | 0d | Patrick |  |
| 176 | 1.6.2.2.6 | BAH review adopter test report (task 5.6.1) |  | 10d | 2007-03-26 | 2007-04-06 | 175 | 153d |  | BAH | 80h |
| 177 | 1.7 | **Documentation** |  | 15d | 2007-03-22 | 2007-04-11 | 2 | 122d |  | Developers; Adopters; BAH | 1656h |
| 178 | 1.7.1 | **Installation guide (task 3.10.1)** |  | 13d | 2007-03-26 | 2007-04-11 | 144FS-3d | 122d |  | Developers; BAH | 312h |
| 179 | 1.7.1.1 | Update installation guide |  | 3d | 2007-03-26 | 2007-03-28 |  | 150d | 0d | Developers | 24h |
| 180 | 1.7.1.2 | Deliver installation guide to BAH (task 3.10.1) | milestone | 0d | 2007-03-28 | 2007-03-28 | 179 | 150d | 0d | Patrick |  |
| 181 | 1.7.1.3 | BAH review of installation guide (task 3.10.1) |  | 10d | 2007-03-29 | 2007-04-11 | 180 | 150d |  | BAH | 80h |

| ID | WBS | Task | Type | Duration | Start | Finish | Predecessors | Total slack | Free slack | Constraint | Resources | Work |
| --- | --- | --- | --- | --- | --- | --- | --- | --- | --- | --- | --- | --- |
| 182 | 1.7.2 | **Administration guide (task 3.13.1)** |  | 13d | 2007-03-26 | 2007-04-11 | 144FS-3d | 122d |  |  | Developers; BAH | 312h |
| 183 | 1.7.2.1 | Update administration guide |  | 3d | 2007-03-26 | 2007-03-28 |  | 150d | 0d |  | Developers | 24h |
| 184 | 1.7.2.2 | Deliver administration guide to BAH (task 3.13.1) | milestone | 0d | 2007-03-28 | 2007-03-28 | 183 | 150d | 0d |  | Patrick |  |
| 185 | 1.7.2.3 | BAH review of administration guide (task 3.13.1) |  | 10d | 2007-03-29 | 2007-04-11 | 184 | 150d |  |  | BAH | 80h |
| 186 | 1.7.3 | **Release notes (task 3.14.1)** |  | 13d | 2007-03-26 | 2007-04-11 | 144FS-3d | 122d |  |  | Developers; BAH | 312h |
| 187 | 1.7.3.1 | Update release notes |  | 3d | 2007-03-26 | 2007-03-28 |  | 150d | 0d |  | Developers | 24h |
| 188 | 1.7.3.2 | Deliver release notes to BAH (task 3.14.1) | milestone | 0d | 2007-03-28 | 2007-03-28 | 187 | 150d | 0d |  | Patrick |  |
| 189 | 1.7.3.3 | BAH review of release notes (task 3.14.1) |  | 10d | 2007-03-29 | 2007-04-11 | 188 | 150d |  |  | BAH | 80h |
| 190 | 1.7.4 | **Adopter summary of C3PR (task 5.1.1)** |  | 15d | 2007-03-22 | 2007-04-11 | 144FS-5d | 122d |  |  | Adopters; BAH | 360h |
| 191 | 1.7.4.1 | Adopter update summary |  | 3d | 2007-03-22 | 2007-03-26 |  | 150d | 0d |  | Adopters | 24h |
| 192 | 1.7.4.2 | Developer review summary |  | 1d | 2007-03-27 | 2007-03-27 | 191 | 150d | 0d |  | Adopters | 8h |
| 193 | 1.7.4.3 | Adopter update summary |  | 1d | 2007-03-28 | 2007-03-28 | 192 | 150d | 0d |  | Adopters | 8h |
| 194 | 1.7.4.4 | Developer deliver C3PR summary to BAH (task 5.1.1) | milestone | 0d | 2007-03-28 | 2007-03-28 | 193 | 150d | 0d |  | Patrick |  |
| 195 | 1.7.4.5 | BAH review of C3PR summary (task 5.1.1) |  | 10d | 2007-03-29 | 2007-04-11 | 194 | 150d |  |  | BAH | 80h |
| 196 | 2 | **Iteration 2 (eligibility, study personnel, security, multi-site study)** |  | 33d | 2007-04-02 | 2007-05-16 |  | 97d |  |  |  | 17912h |
| 197 | 2.1 | Iteration start | milestone | 0d | 2007-04-02 | 2007-04-02 |  | 97d | 0d | start no earlier than 2007-04-02 |  |  |
| 198 | 2.2 | **Project Management** |  | 30d | 2007-04-02 | 2007-05-11 | 197 | 100d |  |  | Patrick; Adopters; BAH | 2640h |
| 199 | 2.2.1 | **Draft project plan (task 1.1)** |  | 30d | 2007-04-02 | 2007-05-11 |  | 100d |  |  | Patrick; Adopters; BAH | 960h |
| 200 | 2.2.1.1 | Developer draft |  | 5d | 2007-04-02 | 2007-04-06 |  | 128d | 0d |  | Patrick | 40h |
| 201 | 2.2.1.2 | BAH review |  | 5d | 2007-04-09 | 2007-04-13 | 200 | 128d | 0d |  | BAH | 40h |
| 202 | 2.2.1.3 | Developer update |  | 5d | 2007-04-16 | 2007-04-20 | 201 | 128d | 0d |  | Patrick | 40h |
| 203 | 2.2.1.4 | Adopter review |  | 3d | 2007-04-23 | 2007-04-25 | 202 | 128d | 0d |  | Adopters | 24h |
| 204 | 2.2.1.5 | Developer update |  | 2d | 2007-04-26 | 2007-04-27 | 203 | 128d | 0d |  | Patrick | 16h |
| 205 | 2.2.1.6 | Deliver project plan to BAH (task 1.1) | milestone | 0d | 2007-04-27 | 2007-04-27 | 204 | 128d | 0d |  | Patrick |  |
| 206 | 2.2.1.7 | BAH review project plan (task 1.1) |  | 10d | 2007-04-30 | 2007-05-11 | 205 | 128d |  |  | BAH | 80h |

| ID | WBS | Task | Type | Duration | Start | Finish | Predecessors | Total slack | Free slack | Resources | Work |
| --- | --- | --- | --- | --- | --- | --- | --- | --- | --- | --- | --- |
| 207 | 2.2.2 | **Update risk matrix (task 1.3.1)** |  | 20d | 2007-04-02 | 2007-04-27 |  | 100d |  | Patrick; BAH | 480h |
| 208 | 2.2.2.1 | Update risk matrix for week 1 |  | 5d | 2007-04-02 | 2007-04-06 |  | 100d | 0d | Patrick | 40h |
| 209 | 2.2.2.2 | Update risk matrix for week 2 |  | 5d | 2007-04-09 | 2007-04-13 | 208 | 100d | 0d | Patrick | 40h |
| 210 | 2.2.2.3 | Deliver risk matrix to BAH (task 1.3.1) | milestone | 0d | 2007-04-13 | 2007-04-13 | 209 | 100d | 0d | Patrick |  |
| 211 | 2.2.2.4 | BAH review risk matrix (task 1.3.1) |  | 10d | 2007-04-16 | 2007-04-27 | 210 | 138d |  | BAH | 80h |
| 212 | 2.2.3 | **Monthly report (task 1.3.1)** |  | 20d | 2007-04-16 | 2007-05-11 | 210 | 100d |  | Patrick; BAH | 480h |
| 213 | 2.2.3.1 | Update risk matrix for week 3 |  | 5d | 2007-04-16 | 2007-04-20 |  | 100d | 0d | Patrick | 40h |
| 214 | 2.2.3.2 | Update risk matrix for week 4 |  | 5d | 2007-04-23 | 2007-04-27 | 213 | 100d | 0d | Patrick | 40h |
| 215 | 2.2.3.3 | Deliver monthly report and risk matrix to BAH (task 1.3.1) | milestone | 0d | 2007-04-27 | 2007-04-27 | 214 | 100d | 0d | Patrick |  |
| 216 | 2.2.3.4 | BAH review monthly report and risk matrix (task 1.3.1) |  | 10d | 2007-04-30 | 2007-05-11 | 215 | 100d |  | BAH | 80h |
| 217 | 2.3 | **Requirements and use cases** |  | 30d | 2007-04-02 | 2007-05-11 | 197 | 97d |  | Developers; Adopters; BAH | 2688h |
| 218 | 2.3.1 | **Create level 1 use cases and requirements** |  | 2d | 2007-04-02 | 2007-04-03 |  | 97d | 0d | Developers | 32h |
| 219 | 2.3.1.1 | Use case document (task 3.1.1) |  | 1d | 2007-04-02 | 2007-04-02 |  | 2d | 0d | Developers | 8h |
| 220 | 2.3.1.2 | Requirements document (3.2.1) |  | 1d | 2007-04-03 | 2007-04-03 | 219 | 2d |  | Developers | 8h |
| 221 | 2.3.2 | **Update use case document (task 3.1.1, task 5.2.1)** |  | 9d | 2007-04-04 | 2007-04-16 | 218 | 100d | 0d | Developers; Adopters | 888h |
| 222 | 2.3.2.1 | **Update eligibility use cases** |  | 9d | 2007-04-04 | 2007-04-16 |  | 100d |  | Kruttik; Priyatam; Adopters | 312h |
| 223 | 2.3.2.1.1 | Developer update |  | 2d | 2007-04-04 | 2007-04-05 |  | 119d | 0d | Kruttik; Priyatam | 32h |
| 224 | 2.3.2.1.2 | Adopter review |  | 5d | 2007-04-06 | 2007-04-12 | 223 | 119d | 0d | Adopters | 40h |
| 225 | 2.3.2.1.3 | Developer update |  | 1d | 2007-04-13 | 2007-04-13 | 224 | 119d | 0d | Kruttik; Priyatam | 16h |
| 226 | 2.3.2.1.4 | Adopter sign-off |  | 1d | 2007-04-16 | 2007-04-16 | 225 | 119d |  | Adopters | 8h |
| 227 | 2.3.2.2 | **Update study personel use cases** |  | 9d | 2007-04-04 | 2007-04-16 |  | 100d |  | Ramakrishna; Adopters | 216h |
| 228 | 2.3.2.2.1 | Developer update |  | 2d | 2007-04-04 | 2007-04-05 |  | 119d | 0d | Ramakrishna | 16h |
| 229 | 2.3.2.2.2 | Adopter review |  | 5d | 2007-04-06 | 2007-04-12 | 228 | 119d | 0d | Adopters | 40h |
| 230 | 2.3.2.2.3 | Developer update |  | 1d | 2007-04-13 | 2007-04-13 | 229 | 119d | 0d | Ramakrishna | 8h |
| 231 | 2.3.2.2.4 | Adopter sign-off |  | 1d | 2007-04-16 | 2007-04-16 | 230 | 119d |  | Adopters | 8h |

| ID | WBS | Task | Type | Duration | Start | Finish | Predecessors | Total slack | Free slack | Resources | Work |
| --- | --- | --- | --- | --- | --- | --- | --- | --- | --- | --- | --- |
| 232 | 2.3.2.3 | **Update multi-site trial use cases** |  | 9d | 2007-04-04 | 2007-04-16 |  | 100d |  | Manav; Adopters | 216h |
| 233 | 2.3.2.3.1 | Developer update |  | 2d | 2007-04-04 | 2007-04-05 |  | 119d | 0d | Manav | 16h |
| 234 | 2.3.2.3.2 | Adopter review |  | 5d | 2007-04-06 | 2007-04-12 | 233 | 119d | 0d | Adopters | 40h |
| 235 | 2.3.2.3.3 | Developer update |  | 1d | 2007-04-13 | 2007-04-13 | 234 | 119d | 0d | Manav | 8h |
| 236 | 2.3.2.3.4 | Adopter sign-off |  | 1d | 2007-04-16 | 2007-04-16 | 235 | 119d |  | Adopters | 8h |
| 237 | 2.3.3 | **Update requirements document (task 3.2.1, task 5.3.1)** |  | 9d | 2007-04-17 | 2007-04-27 | 221, 218 | 100d | 0d | Developers; Adopters | 888h |
| 238 | 2.3.3.1 | **Update eligibility requirements** |  | 9d | 2007-04-17 | 2007-04-27 |  | 100d |  | Kruttik; Priyatam; Adopters | 312h |
| 239 | 2.3.3.1.1 | Developer update |  | 2d | 2007-04-17 | 2007-04-18 |  | 100d | 0d | Kruttik; Priyatam | 32h |
| 240 | 2.3.3.1.2 | Adopter review |  | 5d | 2007-04-19 | 2007-04-25 | 239 | 100d | 0d | Adopters | 40h |
| 241 | 2.3.3.1.3 | Developer update |  | 1d | 2007-04-26 | 2007-04-26 | 240 | 100d | 0d | Kruttik; Priyatam | 16h |
| 242 | 2.3.3.1.4 | Adopter sign-off |  | 1d | 2007-04-27 | 2007-04-27 | 241 | 100d |  | Adopters | 8h |
| 243 | 2.3.3.2 | **Update study personel requirements** |  | 9d | 2007-04-17 | 2007-04-27 |  | 100d |  | Ramakrishna; Adopters | 216h |
| 244 | 2.3.3.2.1 | Developer update |  | 2d | 2007-04-17 | 2007-04-18 |  | 100d | 0d | Ramakrishna | 16h |
| 245 | 2.3.3.2.2 | Adopter review |  | 5d | 2007-04-19 | 2007-04-25 | 244 | 100d | 0d | Adopters | 40h |
| 246 | 2.3.3.2.3 | Developer update |  | 1d | 2007-04-26 | 2007-04-26 | 245 | 100d | 0d | Ramakrishna | 8h |
| 247 | 2.3.3.2.4 | Adopter sign-off |  | 1d | 2007-04-27 | 2007-04-27 | 246 | 100d |  | Adopters | 8h |
| 248 | 2.3.3.3 | **Update multi-site trial requirements** |  | 9d | 2007-04-17 | 2007-04-27 |  | 100d |  | Manav; Adopters | 216h |
| 249 | 2.3.3.3.1 | Developer update |  | 2d | 2007-04-17 | 2007-04-18 |  | 100d | 0d | Manav | 16h |
| 250 | 2.3.3.3.2 | Adopter review |  | 5d | 2007-04-19 | 2007-04-25 | 249 | 100d | 0d | Adopters | 40h |
| 251 | 2.3.3.3.3 | Developer update |  | 1d | 2007-04-26 | 2007-04-26 | 250 | 100d | 0d | Manav | 8h |
| 252 | 2.3.3.3.4 | Adopter sign-off |  | 1d | 2007-04-27 | 2007-04-27 | 251 | 100d |  | Adopters | 8h |
| 253 | 2.3.4 | Developer deliver use case document to BAH (task 3.1.1, task 5.2.1) | milestone | 0d | 2007-04-27 | 2007-04-27 | 237 | 100d | 0d | Patrick |  |
| 254 | 2.3.5 | BAH review use case document (task 3.1.1, task 5.2.1) |  | 10d | 2007-04-30 | 2007-05-11 | 253 | 100d |  | BAH | 80h |
| 255 | 2.3.6 | Developer deliver requirements document to BAH (task 3.2.1, task 5.3.1) | milestone | 0d | 2007-04-27 | 2007-04-27 | 237 | 100d | 0d | Patrick |  |
| 256 | 2.3.7 | BAH review requirements document (task 3.2.1, task 5.3.1) |  | 10d | 2007-04-30 | 2007-05-11 | 255 | 100d |  | BAH | 80h |

| ID | WBS | Task | Type | Duration | Start | Finish | Predecessors | Total slack | Free slack | Resources | Work |
| --- | --- | --- | --- | --- | --- | --- | --- | --- | --- | --- | --- |
| 257 | 2.4 | **Analysis and Design** |  | 31d | 2007-04-04 | 2007-05-16 | 218, 197 | 97d |  | Developers; Adopters; BAH | 3328h |
| 258 | 2.4.1 | **Perform level 1 design** |  | 4d | 2007-04-04 | 2007-04-09 |  | 97d | 0d | Developers | 64h |
| 259 | 2.4.1.1 | Cursory BRIDG harmonization |  | 1d | 2007-04-04 | 2007-04-04 |  | 2d | 0d | Developers | 8h |
| 260 | 2.4.1.2 | Update implementation model |  | 1d | 2007-04-05 | 2007-04-05 | 259 | 2d | 0d | Developers | 8h |
| 261 | 2.4.1.3 | Cursory system design |  | 2d | 2007-04-06 | 2007-04-09 | 260 | 2d |  | Developers | 16h |
| 262 | 2.4.2 | **Modeling (task 3.3.1)** |  | 27d | 2007-04-10 | 2007-05-16 | 258 | 97d |  | Developers; Adopters | 1080h |
| 263 | 2.4.2.1 | **Update model** |  | 6d | 2007-04-10 | 2007-04-17 |  | 97d | 0d | Developers | 240h |
| 264 | 2.4.2.1.1 | **BRIDG harmonization** |  | 3d | 2007-04-10 | 2007-04-12 | 258 | 97d | 0d |  | 96h |
| 265 | 2.4.2.1.1.1 | Harmonize Study model |  | 2d | 2007-04-10 | 2007-04-11 |  | 92d |  | Kruttik; Priyatam; Manav | 48h |
| 266 | 2.4.2.1.1.2 | Harmonize Personnel model |  | 3d | 2007-04-10 | 2007-04-12 |  | 91d |  | Ramakrishna | 24h |
| 267 | 2.4.2.1.1.3 | Harmonize Multi-site Study model |  | 3d | 2007-04-10 | 2007-04-12 |  | 91d |  | Manav | 24h |
| 268 | 2.4.2.1.2 | **Model implementation** |  | 3d | 2007-04-13 | 2007-04-17 | 264 | 97d |  |  | 96h |
| 269 | 2.4.2.1.2.1 | Implement Study model |  | 2d | 2007-04-13 | 2007-04-16 |  | 92d |  | Kruttik; Priyatam; Manav | 48h |
| 270 | 2.4.2.1.2.2 | Implement Personnel model |  | 3d | 2007-04-13 | 2007-04-17 |  | 91d |  | Ramakrishna | 24h |
| 271 | 2.4.2.1.2.3 | Implement Multi-site Study model |  | 3d | 2007-04-13 | 2007-04-17 |  | 91d |  | Manav | 24h |
| 272 | 2.4.2.2 | Adopter review |  | 5d | 2007-04-18 | 2007-04-24 | 263 | 91d | 0d | Adopters | 40h |
| 273 | 2.4.2.3 | **Update model** |  | 6d | 2007-04-25 | 2007-05-02 | 272 | 97d | 0d | Developers | 288h |
| 274 | 2.4.2.3.1 | **BRIDG harmonization** |  | 3d | 2007-04-25 | 2007-04-27 | 272 | 97d | 0d |  | 120h |
| 275 | 2.4.2.3.1.1 | Harmonize Study model |  | 3d | 2007-04-25 | 2007-04-27 |  | 91d |  | Kruttik; Priyatam; Manav | 72h |
| 276 | 2.4.2.3.1.2 | Harmonize Personnel model |  | 3d | 2007-04-25 | 2007-04-27 |  | 91d |  | Ramakrishna | 24h |
| 277 | 2.4.2.3.1.3 | Harmonize Multi-site Study model |  | 3d | 2007-04-25 | 2007-04-27 |  | 97d | 0d | Manav | 24h |
| 278 | 2.4.2.3.2 | **Model implementation** |  | 3d | 2007-04-30 | 2007-05-02 | 274, 277 | 97d |  |  | 120h |
| 279 | 2.4.2.3.2.1 | Implement Study model |  | 3d | 2007-04-30 | 2007-05-02 |  | 97d |  | Kruttik; Priyatam; Manav | 72h |
| 280 | 2.4.2.3.2.2 | Implement Personnel model |  | 3d | 2007-04-30 | 2007-05-02 |  | 97d |  | Ramakrishna | 24h |
| 281 | 2.4.2.3.2.3 | Implement Multi-site Study model |  | 3d | 2007-04-30 | 2007-05-02 |  | 97d | 0d | Manav | 24h |
| 282 | 2.4.2.4 | Developer deliver UML to BAH (task 3.3.1) | milestone | 0d | 2007-05-02 | 2007-05-02 | 273, 281 | 97d | 0d | Patrick |  |
| 283 | 2.4.2.5 | BAH review of UML (task 3.3.1) |  | 10d | 2007-05-03 | 2007-05-16 | 282 | 97d |  | BAH | 80h |

| ID | WBS | Task | Type | Duration | Start | Finish | Predecessors | Total slack | Free slack | Resources | Work |
| --- | --- | --- | --- | --- | --- | --- | --- | --- | --- | --- | --- |
| 284 | 2.4.3 | **System design (task 3.4.1)** |  | 25d | 2007-04-10 | 2007-05-14 | 258 | 99d |  | Developers; BAH | 1440h |
| 285 | 2.4.3.1 | **Design eligibility** |  | 15d | 2007-04-10 | 2007-04-30 |  | 99d | 0d | Kruttik; Priyatam | 480h |
| 286 | 2.4.3.1.1 | Draft UML |  | 5d | 2007-04-10 | 2007-04-16 |  | 99d | 0d | Kruttik; Priyatam | 80h |
| 287 | 2.4.3.1.2 | Team review |  | 5d | 2007-04-17 | 2007-04-23 | 286 | 99d | 0d | Kruttik; Priyatam | 80h |
| 288 | 2.4.3.1.3 | Update design document |  | 5d | 2007-04-24 | 2007-04-30 | 287 | 99d |  | Kruttik; Priyatam | 80h |
| 289 | 2.4.3.2 | **Design personnel** |  | 15d | 2007-04-10 | 2007-04-30 |  | 99d | 0d | Ramakrishna | 240h |
| 290 | 2.4.3.2.1 | Draft UML |  | 5d | 2007-04-10 | 2007-04-16 |  | 99d | 0d | Ramakrishna | 40h |
| 291 | 2.4.3.2.2 | Team review |  | 5d | 2007-04-17 | 2007-04-23 | 290 | 99d | 0d | Ramakrishna | 40h |
| 292 | 2.4.3.2.3 | Update design document |  | 5d | 2007-04-24 | 2007-04-30 | 291 | 99d |  | Ramakrishna | 40h |
| 293 | 2.4.3.3 | **Design multi-site study** |  | 15d | 2007-04-10 | 2007-04-30 |  | 99d | 0d | Manav | 240h |
| 294 | 2.4.3.3.1 | Draft UML |  | 5d | 2007-04-10 | 2007-04-16 |  | 99d | 0d | Manav | 40h |
| 295 | 2.4.3.3.2 | Team review |  | 5d | 2007-04-17 | 2007-04-23 | 294 | 99d | 0d | Manav | 40h |
| 296 | 2.4.3.3.3 | Update design document |  | 5d | 2007-04-24 | 2007-04-30 | 295 | 99d | 0d | Manav | 40h |
| 297 | 2.4.3.4 | Deliver design doc to BAH (task 3.4.1) | milestone | 0d | 2007-04-30 | 2007-04-30 | 285, 289, 293, 296 | 99d | 0d | Patrick |  |
| 298 | 2.4.3.5 | BAH review design doc (task 3.4.1) |  | 10d | 2007-05-01 | 2007-05-14 | 297 | 99d |  | BAH | 80h |
| 299 | 2.5 | **Implementation (task 3.5.1)** |  | 25d | 2007-04-10 | 2007-05-14 | 258, 197 | 98d |  | Developers; BAH | 2424h |
| 300 | 2.5.1 | **Database** |  | 3d | 2007-04-10 | 2007-04-12 |  | 98d | 12d | Developers | 216h |
| 301 | 2.5.1.1 | **Eligibility model** |  | 3d | 2007-04-10 | 2007-04-12 |  | 98d | 0d | Kruttik; Priyatam | 96h |
| 302 | 2.5.1.1.1 | Update DDLs |  | 1d | 2007-04-10 | 2007-04-10 |  | 79d | 0d | Kruttik; Priyatam | 16h |
| 303 | 2.5.1.1.2 | Apply to database |  | 1d | 2007-04-11 | 2007-04-11 | 302 | 79d | 0d | Kruttik; Priyatam | 16h |
| 304 | 2.5.1.1.3 | Create test data |  | 1d | 2007-04-12 | 2007-04-12 | 303 | 79d |  | Kruttik; Priyatam | 16h |
| 305 | 2.5.1.2 | **Study personnel** |  | 3d | 2007-04-10 | 2007-04-12 |  | 99d | 0d | Ramakrishna | 48h |
| 306 | 2.5.1.2.1 | Update DDLs |  | 1d | 2007-04-10 | 2007-04-10 |  | 80d | 0d | Ramakrishna | 8h |
| 307 | 2.5.1.2.2 | Apply to database |  | 1d | 2007-04-11 | 2007-04-11 | 306 | 80d | 0d | Ramakrishna | 8h |
| 308 | 2.5.1.2.3 | Create test data |  | 1d | 2007-04-12 | 2007-04-12 | 307 | 80d |  | Ramakrishna | 8h |

| ID | WBS | Task | Duration | Start | Finish | Predecessors | Total slack | Free slack | Resources | Work |
| --- | --- | --- | --- | --- | --- | --- | --- | --- | --- | --- |
| 309 | 2.5.1.3 | **Multi-site** | 3d | 2007-04-10 | 2007-04-12 |  | 99d | 0d | Manav | 48h |
| 310 | 2.5.1.3.1 | Update DDLs | 1d | 2007-04-10 | 2007-04-10 |  | 80d | 0d | Manav | 8h |
| 311 | 2.5.1.3.2 | Apply to database | 1d | 2007-04-11 | 2007-04-11 | 310 | 80d | 0d | Manav | 8h |
| 312 | 2.5.1.3.3 | Create test data | 1d | 2007-04-12 | 2007-04-12 | 311 | 80d |  | Manav | 8h |
| 313 | 2.5.2 | **Business layer** | 10d | 2007-04-13 | 2007-04-26 |  | 98d |  | Developers | 816h |
| 314 | 2.5.2.1 | **Implement eligibility APIs** | 7d | 2007-04-13 | 2007-04-23 | 301 | 98d | 0d | Kruttik; Priyatam | 224h |
| 315 | 2.5.2.1.1 | Update APIs | 2d | 2007-04-13 | 2007-04-16 |  | 79d | 0d | Kruttik; Priyatam | 32h |
| 316 | 2.5.2.1.2 | Implement APIs | 3d | 2007-04-17 | 2007-04-19 | 315 | 79d | 0d | Kruttik; Priyatam | 48h |
| 317 | 2.5.2.1.3 | Deploy APIs | 2d | 2007-04-20 | 2007-04-23 | 316 | 79d |  | Kruttik; Priyatam | 32h |
| 318 | 2.5.2.2 | **Implement study personnel APIs** | 6d | 2007-04-13 | 2007-04-20 | 305 | 99d | 0d | Ramakrishna | 96h |
| 319 | 2.5.2.2.1 | Update APIs | 2d | 2007-04-13 | 2007-04-16 |  | 80d | 0d | Ramakrishna | 16h |
| 320 | 2.5.2.2.2 | Implement APIs | 3d | 2007-04-17 | 2007-04-19 | 319 | 80d | 0d | Ramakrishna | 24h |
| 321 | 2.5.2.2.3 | Deploy APIs | 1d | 2007-04-20 | 2007-04-20 | 320 | 80d |  | Ramakrishna | 8h |
| 322 | 2.5.2.3 | **Implement C3PR registration APIs** | 6d | 2007-04-13 | 2007-04-20 | 309 | 99d | 0d | Manav | 96h |
| 323 | 2.5.2.3.1 | Update APIs | 2d | 2007-04-13 | 2007-04-16 |  | 80d | 0d | Manav | 16h |
| 324 | 2.5.2.3.2 | Implement APIs | 3d | 2007-04-17 | 2007-04-19 | 323 | 80d | 0d | Manav | 24h |
| 325 | 2.5.2.3.3 | Deploy APIs | 1d | 2007-04-20 | 2007-04-20 | 324 | 80d |  | Manav | 8h |
| 326 | 2.5.2.4 | **Implement import eligibility** | 10d | 2007-04-13 | 2007-04-26 | 301 | 111d |  | Kruttik; Priyatam | 320h |
| 327 | 2.5.2.4.1 | Import eligibility from a file | 5d | 2007-04-13 | 2007-04-19 |  | 111d | 0d | Kruttik; Priyatam | 80h |
| 328 | 2.5.2.4.2 | Import eligibility from the caDSR | 5d | 2007-04-20 | 2007-04-26 | 327 | 111d |  | Kruttik; Priyatam | 80h |
| 329 | 2.5.3 | **Security** | 5d | 2007-04-10 | 2007-04-16 |  | 119d |  | Ramakrishna; Manav | 240h |
| 330 | 2.5.3.1 | Connect C3PR roles to GridGrouper groups | 5d | 2007-04-10 | 2007-04-16 |  | 119d |  | Ramakrishna; Manav | 80h |
| 331 | 2.5.3.2 | Hook groups into authorization | 5d | 2007-04-10 | 2007-04-16 |  | 119d |  | Ramakrishna; Manav | 80h |
| 332 | 2.5.4 | **Web interface** | 6d | 2007-04-23 | 2007-04-30 |  | 98d | 0d | Developers | 672h |
| 333 | 2.5.4.1 | **Modify study management interface** | 6d | 2007-04-23 | 2007-04-30 |  | 98d |  | Kruttik; Priyatam; Manav | 384h |
| 334 | 2.5.4.1.1 | Manage eligibility criteria | 5d | 2007-04-24 | 2007-04-30 | 314 | 98d |  | Kruttik; Priyatam; Manav | 120h |
| 335 | 2.5.4.1.2 | Manage multi-site study | 5d | 2007-04-23 | 2007-04-27 | 322 | 99d |  | Kruttik; Priyatam; Manav | 120h |

| ID | WBS | Task | Type | Duration | Start | Finish | Predecessors | Total slack | Free slack | Resources | Work |
| --- | --- | --- | --- | --- | --- | --- | --- | --- | --- | --- | --- |
| 336 | 2.5.4.2 | **Modify study personnel management interface** |  | 5d | 2007-04-23 | 2007-04-27 |  | 99d |  | Ramakrishna | 80h |
| 337 | 2.5.4.2.1 | Manage study personnel |  | 5d | 2007-04-23 | 2007-04-27 | 318 | 99d |  | Ramakrishna | 40h |
| 338 | 2.5.4.3 | **Modify registration interface** |  | 5d | 2007-04-24 | 2007-04-30 |  | 98d |  | Kruttik; Priyatam | 160h |
| 339 | 2.5.4.3.1 | Check eligibility |  | 5d | 2007-04-24 | 2007-04-30 | 314 | 98d | 0d | Kruttik; Priyatam | 80h |
| 340 | 2.5.5 | Deliver codebase to BAH (task 3.5.1) | milestone | 0d | 2007-04-30 | 2007-04-30 | 300, 332, 339 | 98d | 0d | Patrick |  |
| 341 | 2.5.6 | BAH review codebase (task 3.5.1) |  | 10d | 2007-05-01 | 2007-05-14 | 340 | 99d |  | BAH | 80h |
| 342 | 2.6 | **Testing** |  | 32d | 2007-04-02 | 2007-05-15 | 197 | 98d |  | Developers; Adopters; BAH | 5176h |
| 343 | 2.6.1 | **Developer testing** |  | 32d | 2007-04-02 | 2007-05-15 |  | 98d |  | BAH; Adopters; Developers | 2112h |
| 344 | 2.6.1.1 | **Update developer test plan (task 3.6.1, task 5.4.1)** |  | 30d | 2007-04-02 | 2007-05-11 |  | 100d |  | Developers; Adopters; BAH | 960h |
| 345 | 2.6.1.1.1 | Developer draft |  | 5d | 2007-04-02 | 2007-04-06 |  | 100d | 0d | Developers | 40h |
| 346 | 2.6.1.1.2 | Adopter review |  | 5d | 2007-04-09 | 2007-04-13 | 345 | 100d | 0d | Adopters | 40h |
| 347 | 2.6.1.1.3 | Developer update |  | 5d | 2007-04-16 | 2007-04-20 | 346 | 100d | 0d | Developers | 40h |
| 348 | 2.6.1.1.4 | Adopter review and sign |  | 5d | 2007-04-23 | 2007-04-27 | 347 | 100d | 0d | Adopters | 40h |
| 349 | 2.6.1.1.5 | Deliver signed test plan to BAH (task 3.6.1, task 5.4.1) | milestone | 0d | 2007-04-27 | 2007-04-27 | 348 | 100d | 0d | Patrick |  |
| 350 | 2.6.1.1.6 | BAH review signed test plan (task 3.6.1, task 5.4.1) |  | 10d | 2007-04-30 | 2007-05-11 | 349 | 100d |  | BAH | 80h |
| 351 | 2.6.1.2 | **Integration and system testing (task 3.8.1)** |  | 16d | 2007-04-24 | 2007-05-15 | 340FS-5d | 98d |  | Developers; BAH | 384h |
| 352 | 2.6.1.2.1 | Generate test data |  | 1d | 2007-04-24 | 2007-04-24 |  | 98d | 0d | Developers | 8h |
| 353 | 2.6.1.2.2 | Write tests |  | 3d | 2007-04-25 | 2007-04-27 | 352 | 98d | 0d | Developers | 24h |
| 354 | 2.6.1.2.3 | Validate tests |  | 1d | 2007-04-30 | 2007-04-30 | 353 | 98d | 0d | Developers | 8h |
| 355 | 2.6.1.2.4 | Generate test report |  | 1d | 2007-05-01 | 2007-05-01 | 354 | 98d | 0d | Developers | 8h |
| 356 | 2.6.1.2.5 | Deliver test report to BAH (task 3.8.1) | milestone | 0d | 2007-05-01 | 2007-05-01 | 355 | 98d | 0d | Patrick |  |
| 357 | 2.6.1.2.6 | BAH review test report (task 3.8.1) |  | 10d | 2007-05-02 | 2007-05-15 | 356 | 98d |  | BAH | 80h |
| 358 | 2.6.2 | **Adopter testing** |  | 30d | 2007-04-02 | 2007-05-11 | 357 | 100d |  | Adopters; Developers; BAH | 2296h |
| 359 | 2.6.2.1 | **Update adopter test plan (task 5.5.1)** |  | 30d | 2007-04-02 | 2007-05-11 |  | 100d |  | Adopters; Developers; BAH | 1000h |
| 360 | 2.6.2.1.1 | Adopter update test script |  | 5d | 2007-04-02 | 2007-04-06 |  | 100d | 0d | Adopters | 40h |
| 361 | 2.6.2.1.2 | Adopter update test approach |  | 5d | 2007-04-09 | 2007-04-13 | 360 | 100d | 0d | Adopters | 40h |
| 362 | 2.6.2.1.3 | Developer review |  | 5d | 2007-04-16 | 2007-04-20 | 361 | 100d | 0d | Patrick; Ram | 80h |
| 363 | 2.6.2.1.4 | Adopter update |  | 5d | 2007-04-23 | 2007-04-27 | 362 | 100d | 0d | Adopters | 40h |
| 364 | 2.6.2.1.5 | Developer deliver adopter test plan to BAH (task 5.5.1) | milestone | 0d | 2007-04-27 | 2007-04-27 | 363 | 100d | 0d | Patrick |  |
| 365 | 2.6.2.1.6 | BAH review adopter test plan (task 5.5.1) |  | 10d | 2007-04-30 | 2007-05-11 | 364 | 100d |  | BAH | 80h |

| ID | WBS | Task | Type | Duration | Start | Finish | Predecessors | Total slack | Free slack | Resources | Work |
| --- | --- | --- | --- | --- | --- | --- | --- | --- | --- | --- | --- |
| 366 | 2.6.2.2 | **QA testing (task 5.6.1)** |  | 24d | 2007-04-09 | 2007-05-10 | 360, 365 | 101d |  | Adopters; BAH | 576h |
| 367 | 2.6.2.2.1 | Adopter create test data |  | 5d | 2007-04-09 | 2007-04-13 |  | 101d | 0d | Adopters | 40h |
| 368 | 2.6.2.2.2 | Adopter perform test script |  | 5d | 2007-04-16 | 2007-04-20 | 367 | 101d | 0d | Adopters | 40h |
| 369 | 2.6.2.2.3 | Adopter document results |  | 2d | 2007-04-23 | 2007-04-24 | 368 | 101d | 0d | Adopters | 16h |
| 370 | 2.6.2.2.4 | Adopter log bugs |  | 2d | 2007-04-25 | 2007-04-26 | 369 | 101d | 0d | Adopters | 16h |
| 371 | 2.6.2.2.5 | Developer deliver adopter test report to BAH (task 5.6.1) | milestone | 0d | 2007-04-26 | 2007-04-26 | 369, 370 | 101d | 0d | Patrick |  |
| 372 | 2.6.2.2.6 | BAH review adopter test report (task 5.6.1) |  | 10d | 2007-04-27 | 2007-05-10 | 371 | 101d |  | BAH | 80h |
| 373 | 2.7 | **Documentation** |  | 15d | 2007-04-24 | 2007-05-14 | 197 | 99d |  | Developers; Adopters; BAH | 1656h |
| 374 | 2.7.1 | **Installation guide (task 3.10.1)** |  | 13d | 2007-04-26 | 2007-05-14 | 340FS-3d | 99d |  | Developers; BAH | 312h |
| 375 | 2.7.1.1 | Update installation guide |  | 3d | 2007-04-26 | 2007-04-30 |  | 79d | 0d | Developers | 24h |
| 376 | 2.7.1.2 | Deliver installation guide to BAH (task 3.10.1) | milestone | 0d | 2007-04-30 | 2007-04-30 | 375 | 79d | 0d | Patrick |  |
| 377 | 2.7.1.3 | BAH review of installation guide (task 3.10.1) |  | 10d | 2007-05-01 | 2007-05-14 | 376 | 79d |  | BAH | 80h |
| 378 | 2.7.2 | **Administration guide (task 3.13.1)** |  | 13d | 2007-04-26 | 2007-05-14 | 340FS-3d | 99d |  | Developers; BAH | 312h |
| 379 | 2.7.2.1 | Update administration guide |  | 3d | 2007-04-26 | 2007-04-30 |  | 79d | 0d | Developers | 24h |
| 380 | 2.7.2.2 | Deliver administration guide to BAH (task 3.13.1) | milestone | 0d | 2007-04-30 | 2007-04-30 | 379 | 79d | 0d | Patrick |  |
| 381 | 2.7.2.3 | BAH review of administration guide (task 3.13.1) |  | 10d | 2007-05-01 | 2007-05-14 | 380 | 79d |  | BAH | 80h |
| 382 | 2.7.3 | **Release notes (task 3.14.1)** |  | 13d | 2007-04-26 | 2007-05-14 | 340FS-3d | 99d |  | Developers; BAH | 312h |
| 383 | 2.7.3.1 | Update release notes |  | 3d | 2007-04-26 | 2007-04-30 |  | 79d | 0d | Developers | 24h |
| 384 | 2.7.3.2 | Deliver release notes to BAH (task 3.14.1) | milestone | 0d | 2007-04-30 | 2007-04-30 | 383 | 79d | 0d | Patrick |  |
| 385 | 2.7.3.3 | BAH review of release notes (task 3.14.1) |  | 10d | 2007-05-01 | 2007-05-14 | 384 | 79d |  | BAH | 80h |
| 386 | 2.7.4 | **Adopter summary of C3PR (task 5.1.1)** |  | 15d | 2007-04-24 | 2007-05-14 | 340FS-5d | 99d |  | Adopters; BAH | 360h |
| 387 | 2.7.4.1 | Adopter update summary |  | 3d | 2007-04-24 | 2007-04-26 |  | 79d | 0d | Adopters | 24h |
| 388 | 2.7.4.2 | Developer review summary |  | 1d | 2007-04-27 | 2007-04-27 | 387 | 79d | 0d | Adopters | 8h |
| 389 | 2.7.4.3 | Adopter update summary |  | 1d | 2007-04-30 | 2007-04-30 | 388 | 79d | 0d | Adopters | 8h |
| 390 | 2.7.4.4 | Developer deliver C3PR summary to BAH (task 5.1.1) | milestone | 0d | 2007-04-30 | 2007-04-30 | 389 | 79d | 0d | Patrick |  |
| 391 | 2.7.4.5 | BAH review of C3PR summary (task 5.1.1) |  | 10d | 2007-05-01 | 2007-05-14 | 390 | 79d |  | BAH | 80h |

| ID | WBS | Task | Type | Duration | Start | Finish | Total slack | Constraint |
| --- | --- | --- | --- | --- | --- | --- | --- | --- |
| 392 | 3 | **Iteration 3 (stratification, security, multi-site study)** |  | 0d | 2007-05-02 | 2007-05-02 | 108d |  |
| 393 | 3.1 | Iteration start | milestone | 0d | 2007-05-02 | 2007-05-02 | 108d | start no earlier than 2007-05-02 |
| 394 | 4 | **Iteration 4 (stratification, randomization, reporting, legacy systems)** |  | 0d | 2007-06-01 | 2007-06-01 | 86d |  |
| 395 | 4.1 | Iteration start | milestone | 0d | 2007-06-01 | 2007-06-01 | 86d | start no earlier than 2007-06-01 |
| 396 | 5 | **Iteration 5 (randomization, reporting, legacy systems)** |  | 0d | 2007-07-02 | 2007-07-02 | 65d |  |
| 397 | 5.1 | Iteration start | milestone | 0d | 2007-07-02 | 2007-07-02 | 65d | start no earlier than 2007-07-02 |
| 398 | 6 | **Iteration 6 (randomization, installer)** |  | 0d | 2007-08-01 | 2007-08-01 | 43d |  |
| 399 | 6.1 | Iteration start | milestone | 0d | 2007-08-01 | 2007-08-01 | 43d | start no earlier than 2007-08-01 |
| 400 | 7 | **Iteration 7** |  | 0d | 2007-09-03 | 2007-09-03 | 20d |  |
| 401 | 7.1 | Iteration start | milestone | 0d | 2007-09-03 | 2007-09-03 | 20d | start no earlier than 2007-09-03 |
| 402 | 8 | **Iteration 8** |  | 0d | 2007-10-01 | 2007-10-01 | 0d |  |
| 403 | 8.1 | Iteration start | milestone | 0d | 2007-10-01 | 2007-10-01 | 0d | start no earlier than 2007-10-01 |
