# elaboration_project_plan

Schedule from MS Project, 2006-11-01 to 2007-02-28.
Duke University

## Calendars

- Standard: Mon-Fri 08:00-12:00, 13:00-17:00; Sat-Sun off.

## Schedule

| ID | WBS | Task | Duration | Start | Finish | Predecessors | Total slack | Free slack |
| --- | --- | --- | --- | --- | --- | --- | --- | --- |
| 1 | 1 | **Iteration 1** | 22d | 2006-11-01 | 2006-11-30 |  | 0d |  |
| 2 | 1.1 | **Project planning** | 22d | 2006-11-01 | 2006-11-30 |  | 0d |  |
| 3 | 1.1.1 | Draft project plan | 10d | 2006-11-01 | 2006-11-14 |  | 2d | 0d |
| 4 | 1.1.2 | Draft communication plan | 13d | 2006-11-01 | 2006-11-17 |  | 9d |  |
| 5 | 1.1.3 | Draft risk matrix | 10d | 2006-11-15 | 2006-11-28 | 3 | 2d |  |
| 6 | 1.1.4 | Update risk matrix | 22d | 2006-11-01 | 2006-11-30 |  | 0d |  |
| 7 | 1.1.5 | Draft meeting notes from face-to-face | 18d | 2006-11-01 | 2006-11-24 |  | 4d |  |
| 8 | 1.1.6 | Collaboration report | 22d | 2006-11-01 | 2006-11-30 |  | 0d |  |
| 9 | 1.1.7 | Refine vision and scope document | 18d | 2006-11-01 | 2006-11-24 |  | 4d |  |
| 10 | 1.1.8 | Monthly report | 22d | 2006-11-01 | 2006-11-30 |  | 0d |  |
| 11 | 1.1.9 | Adoption Collaboration Report | 22d | 2006-11-01 | 2006-11-30 |  | 0d |  |
| 12 | 1.2 | **Development artifacts** | 22d | 2006-11-01 | 2006-11-30 |  | 0d |  |
| 13 | 1.2.1 | Use case document | 22d | 2006-11-01 | 2006-11-30 |  | 0d |  |
| 14 | 1.2.2 | SRS document | 22d | 2006-11-01 | 2006-11-30 |  | 0d |  |
| 15 | 1.2.3 | UML diagrams | 22d | 2006-11-01 | 2006-11-30 |  | 0d |  |
| 16 | 1.2.4 | Design document | 22d | 2006-11-01 | 2006-11-30 |  | 0d |  |
| 17 | 1.2.5 | Test plan document | 22d | 2006-11-01 | 2006-11-30 |  | 0d |  |
| 18 | 1.2.6 | Prototype code | 22d | 2006-11-01 | 2006-11-30 |  | 0d |  |
| 19 | 1.2.7 | Test report | 22d | 2006-11-01 | 2006-11-30 |  | 0d |  |
| 20 | 1.3 | **Development** | 22d | 2006-11-01 | 2006-11-30 |  | 0d |  |
| 21 | 1.3.1 | **Web interface** | 22d | 2006-11-01 | 2006-11-30 |  | 0d |  |
| 22 | 1.3.1.1 | Migrate v1 code into codebase | 22d | 2006-11-01 | 2006-11-30 |  | 0d |  |
| 23 | 1.3.1.2 | First pass at dynamic interface | 22d | 2006-11-01 | 2006-11-30 |  | 0d |  |
| 24 | 1.3.1.3 | Add registration tab | 22d | 2006-11-01 | 2006-11-30 |  | 0d |  |

| ID | WBS | Task | Duration | Start | Finish | Predecessors | Total slack |
| --- | --- | --- | --- | --- | --- | --- | --- |
| 25 | 1.3.2 | **Grid service** | 22d | 2006-11-01 | 2006-11-30 |  | 0d |
| 26 | 1.3.2.1 | Create grid service skeleton | 22d | 2006-11-01 | 2006-11-30 |  | 0d |
| 27 | 1.3.3 | **Database** | 22d | 2006-11-01 | 2006-11-30 |  | 0d |
| 28 | 1.3.3.1 | Migrate v1 code into codebase | 22d | 2006-11-01 | 2006-11-30 |  | 0d |
| 29 | 1.3.4 | **Domain model** | 22d | 2006-11-01 | 2006-11-30 |  | 0d |
| 30 | 1.3.4.1 | Migrate v1 code into codebase | 22d | 2006-11-01 | 2006-11-30 |  | 0d |
| 31 | 1.3.4.2 | First draft of protocol model | 22d | 2006-11-01 | 2006-11-30 |  | 0d |
| 32 | 2 | **Iteration 2** | 21d | 2006-12-01 | 2006-12-29 | 1 | 0d |
| 33 | 2.1 | **Project planning** | 21d | 2006-12-01 | 2006-12-29 |  | 0d |
| 34 | 2.1.1 | Update risk matrix | 11d | 2006-12-01 | 2006-12-15 |  | 10d |
| 35 | 2.1.2 | Update risk matrix | 21d | 2006-12-01 | 2006-12-29 |  | 0d |
| 36 | 2.1.3 | Monthly report | 21d | 2006-12-01 | 2006-12-29 |  | 0d |
| 37 | 2.1.4 | Adoption Collaboration Report | 21d | 2006-12-01 | 2006-12-29 |  | 0d |
| 38 | 2.2 | **Development artifacts** | 21d | 2006-12-01 | 2006-12-29 |  | 0d |
| 39 | 2.2.1 | Use case document | 21d | 2006-12-01 | 2006-12-29 |  | 0d |
| 40 | 2.2.2 | SRS document | 21d | 2006-12-01 | 2006-12-29 |  | 0d |
| 41 | 2.2.3 | UML diagrams | 21d | 2006-12-01 | 2006-12-29 |  | 0d |
| 42 | 2.2.4 | Design document | 21d | 2006-12-01 | 2006-12-29 |  | 0d |
| 43 | 2.2.5 | Test plan document | 21d | 2006-12-01 | 2006-12-29 |  | 0d |
| 44 | 2.2.6 | Prototype code | 21d | 2006-12-01 | 2006-12-29 |  | 0d |
| 45 | 2.2.7 | Test report | 21d | 2006-12-01 | 2006-12-29 |  | 0d |
| 46 | 3 | **Iteration 3** | 23d | 2007-01-01 | 2007-01-31 | 32 | 0d |
| 47 | 3.1 | **Project planning** | 23d | 2007-01-01 | 2007-01-31 |  | 0d |
| 48 | 3.1.1 | Update risk matrix | 10d | 2007-01-01 | 2007-01-12 |  | 13d |
| 49 | 3.1.2 | Update risk matrix | 23d | 2007-01-01 | 2007-01-31 |  | 0d |
| 50 | 3.1.3 | Monthly report | 23d | 2007-01-01 | 2007-01-31 |  | 0d |
| 51 | 3.1.4 | Adoption Collaboration Report | 23d | 2007-01-01 | 2007-01-31 |  | 0d |

| ID | WBS | Task | Duration | Start | Finish | Predecessors | Total slack |
| --- | --- | --- | --- | --- | --- | --- | --- |
| 52 | 3.2 | **Development artifacts** | 23d | 2007-01-01 | 2007-01-31 |  | 0d |
| 53 | 3.2.1 | Use case document | 23d | 2007-01-01 | 2007-01-31 |  | 0d |
| 54 | 3.2.2 | SRS document | 23d | 2007-01-01 | 2007-01-31 |  | 0d |
| 55 | 3.2.3 | UML diagrams | 23d | 2007-01-01 | 2007-01-31 |  | 0d |
| 56 | 3.2.4 | Design document | 23d | 2007-01-01 | 2007-01-31 |  | 0d |
| 57 | 3.2.5 | Test plan document | 23d | 2007-01-01 | 2007-01-31 |  | 0d |
| 58 | 3.2.6 | Prototype code | 23d | 2007-01-01 | 2007-01-31 |  | 0d |
| 59 | 3.2.7 | Test report | 23d | 2007-01-01 | 2007-01-31 |  | 0d |
| 60 | 4 | **Iteration 4** | 20d | 2007-02-01 | 2007-02-28 | 46 | 0d |
| 61 | 4.1 | **Project planning** | 20d | 2007-02-01 | 2007-02-28 |  | 0d |
| 62 | 4.1.1 | Update risk matrix | 11d | 2007-02-01 | 2007-02-15 |  | 9d |
| 63 | 4.1.2 | Update risk matrix | 20d | 2007-02-01 | 2007-02-28 |  | 0d |
| 64 | 4.1.3 | Monthly report | 20d | 2007-02-01 | 2007-02-28 |  | 0d |
| 65 | 4.1.4 | Construction and transition phase plan | 20d | 2007-02-01 | 2007-02-28 |  | 0d |
| 66 | 4.1.5 | Adoption Collaboration Report | 20d | 2007-02-01 | 2007-02-28 |  | 0d |
| 67 | 4.2 | **Development artifacts** | 20d | 2007-02-01 | 2007-02-28 |  | 0d |
| 68 | 4.2.1 | Use case document | 20d | 2007-02-01 | 2007-02-28 |  | 0d |
| 69 | 4.2.2 | SRS document | 20d | 2007-02-01 | 2007-02-28 |  | 0d |
| 70 | 4.2.3 | UML diagrams | 20d | 2007-02-01 | 2007-02-28 |  | 0d |
| 71 | 4.2.4 | Design document | 20d | 2007-02-01 | 2007-02-28 |  | 0d |
| 72 | 4.2.5 | Test plan document | 20d | 2007-02-01 | 2007-02-28 |  | 0d |
| 73 | 4.2.6 | Prototype code | 20d | 2007-02-01 | 2007-02-28 |  | 0d |
| 74 | 4.2.7 | Test report | 20d | 2007-02-01 | 2007-02-28 |  | 0d |
| 75 | 4.2.8 | Lessons learned document | 20d | 2007-02-01 | 2007-02-28 |  | 0d |
| 76 | 4.2.9 | Technical architecture guide | 20d | 2007-02-01 | 2007-02-28 |  | 0d |
